# GestiónProyecto_Llamathrust

How a schedule from MS Project changed from version to version. A marks actual dates.

## Version 1 (saved 2019-04-18, file GestiónProyecto_Llamathrust_Equitativo.mpp)

Note of the change: Tareas-Recursos optimizados v1 :sunglasses:

| ID | WBS | Task | Duration | Start | Finish | Predecessors | Complete | Total float |
| --- | --- | --- | --- | --- | --- | --- | --- | --- |
| 1 | 1 | **Llamathrust** | 545d | 2019-02-04 A | 2021-03-25 |  | 13% | 0d |
| 2 | 1.1 | **Dispositivos Enchufe** | 545d | 2019-02-04 A | 2021-03-25 |  | 12% | 0d |
| 3 | 1.1.1 | **Tomar datos de los sensores** | 124d | 2019-02-04 A | 2019-07-31 |  | 42% | 0d |
| 4 |  | Planificación | 7d | 2019-02-04 A | 2019-02-12 A |  | 100% |  |
| 5 |  | Diseño del producto | 18d | 2019-02-13 A | 2019-03-08 A | 4 | 100% |  |
| 6 |  | Programación | 76d | 2019-03-11 A | 2019-07-01 | 5 | 36% | 0d |
| 7 |  | Integración y prueba | 22d | 2019-07-02 | 2019-07-31 | 6 |  | 0d |
| 8 | 1.1.2 | **Conectar los enchufes con la puerta de enlace** | 164d | 2019-08-01 | 2020-03-31 | 3, 40 |  | 0d |
| 9 |  | Planificación | 8d | 2019-08-01 | 2019-08-13 |  |  | 0d |
| 10 |  | Diseño del producto | 21d | 2019-08-14 | 2019-09-12 | 9 |  | 0d |
| 11 |  | Programación | 96d | 2019-09-13 | 2020-02-11 | 10 |  | 0d |
| 12 |  | Integración y prueba | 32d | 2020-02-12 | 2020-03-31 | 11 |  | 0d |
| 13 | 1.1.3 | **Gestión de tareas que tomarán los datos periódicamente** | 144d | 2020-09-07 | 2021-03-25 | 24 |  | 0d |
| 14 |  | Planificación | 8d | 2020-09-07 | 2020-09-16 |  |  | 0d |
| 15 |  | Diseño del producto | 21d | 2020-09-17 | 2020-10-15 | 14 |  | 0d |
| 16 |  | Programación | 89d | 2020-10-16 | 2021-02-17 | 15 |  | 0d |
| 17 |  | Integración y prueba | 26d | 2021-02-18 | 2021-03-25 | 16 |  | 0d |
| 18 | 1.2 | **Dispositivos de puerta de enlace** | 142d | 2020-04-01 | 2020-10-15 |  |  | 0d |
| 19 | 1.2.1 | **Conectar la puerta de enlace con los enchufes** | 21d | 2020-04-01 | 2020-04-29 | 8 |  | 0d |
| 20 |  | Planificación | 1d | 2020-04-01 | 2020-04-01 |  |  | 0d |
| 21 |  | Diseño del producto | 3d | 2020-04-02 | 2020-04-06 | 20 |  | 0d |
| 22 |  | Programación | 13d | 2020-04-07 | 2020-04-23 | 21 |  | 0d |
| 23 |  | Integración y prueba | 4d | 2020-04-24 | 2020-04-29 | 22 |  | 0d |
| 24 | 1.2.2 | **Conectar la puerta de enlace con la base de datos** | 16d | 2020-08-14 | 2020-09-04 | 45 |  | 0d |
| 25 |  | Planificación | 1d | 2020-08-14 | 2020-08-14 |  |  | 0d |
| 26 |  | Diseño del producto | 2d | 2020-08-17 | 2020-08-18 | 25 |  | 0d |
| 27 |  | Programación | 10d | 2020-08-19 | 2020-09-01 | 26 |  | 0d |
| 28 |  | Integración y prueba | 3d | 2020-09-02 | 2020-09-04 | 27 |  | 0d |
| 29 | 1.2.3 | **Procesar las medidas recibidas de los sensores** | 48d | 2020-04-30 | 2020-07-06 | 19 |  | 0d |
| 30 |  | Planificación | 2d | 2020-04-30 | 2020-05-01 |  |  | 0d |
| 31 |  | Diseño del producto | 5d | 2020-05-04 | 2020-05-08 | 30 |  | 0d |
| 32 |  | Progamación | 24d | 2020-05-11 | 2020-06-11 | 31 |  | 0d |
| 33 |  | Integración y prueba | 13d | 2020-06-12 | 2020-07-06 | 32 |  | 0d |
| 34 | 1.2.4 | **Enlazar la puerta enlace con la aplicación de usuario** | 32d | 2020-09-02 | 2020-10-15 | 50 |  | 92d |
| 35 |  | Planificación | 1d | 2020-09-02 | 2020-09-02 |  |  | 92d |
| 36 |  | Diseño del producto | 5d | 2020-09-03 | 2020-09-09 | 35 |  | 92d |
| 37 |  | Programación | 20d | 2020-09-10 | 2020-10-07 | 36 |  | 92d |
| 38 |  | Integración y prueba | 6d | 2020-10-08 | 2020-10-15 | 37 |  | 92d |
| 39 | 1.3 | **Aplicación de clientes** | 398d | 2019-02-04 A | 2020-09-01 |  | 41% | 92d |
| 40 | 1.3.1 | **Creación de la interfaz** | 47d | 2019-02-04 A | 2019-04-09 A |  | 100% |  |
| 41 |  | Planificación | 2d | 2019-02-04 A | 2019-02-05 A |  | 100% |  |
| 42 |  | Diseño del producto | 7d | 2019-02-06 A | 2019-02-14 A | 41 | 100% |  |
| 43 |  | Programación | 30d | 2019-02-15 A | 2019-03-28 A | 42 | 100% |  |
| 44 |  | Integración y prueba | 8d | 2019-03-29 A | 2019-04-09 A | 43 | 100% |  |
| 45 | 1.3.2 | **Enlazar la aplicación con la base de datos** | 28d | 2020-07-07 | 2020-08-13 | 61, 29 |  | 0d |
| 46 |  | Planificación | 1d | 2020-07-07 | 2020-07-07 |  |  | 0d |
| 47 |  | Diseño del producto | 4d | 2020-07-08 | 2020-07-13 | 46 |  | 0d |
| 48 |  | Progamación | 18d | 2020-07-14 | 2020-08-06 | 47 |  | 0d |
| 49 |  | Integración y prueba | 5d | 2020-08-07 | 2020-08-13 | 48 |  | 0d |
| 50 | 1.3.3 | **Mostrar los datos recibidos en la interfaz** | 41d | 2020-07-07 | 2020-09-01 | 61, 29 |  | 92d |
| 51 |  | Planificación | 2d | 2020-07-07 | 2020-07-08 |  |  | 92d |
| 52 |  | Diseño del producto | 6d | 2020-07-09 | 2020-07-16 | 51 |  | 92d |
| 53 |  | Programación | 26d | 2020-07-17 | 2020-08-21 | 52 |  | 92d |
| 54 |  | Integración y prueba | 7d | 2020-08-24 | 2020-09-01 | 53 |  | 92d |
| 55 | 1.4 | **Base de datos** | 324d | 2019-08-09 | 2020-11-17 |  |  | 92d |
| 56 | 1.4.1 | **Crear la estructura de los datos** | 45d | 2019-08-09 | 2019-10-14 | 3, 40 |  | 160d |
| 57 |  | Planificación | 3d | 2019-08-09 | 2019-08-19 |  |  | 159d |
| 58 |  | Diseño del producto | 6d | 2019-08-20 | 2019-08-27 | 57 |  | 159d |
| 59 |  | Programación | 26d | 2019-08-28 | 2019-10-02 | 58 |  | 159d |
| 60 |  | Integración y prueba | 7d | 2019-10-03 | 2019-10-14 | 59 |  | 160d |
| 61 | 1.4.2 | **Recibir peticiones externas** | 23d | 2019-10-15 | 2019-11-15 | 56 |  | 160d |
| 62 |  | Planificación | 1d | 2019-10-15 | 2019-10-15 |  |  | 160d |
| 63 |  | Diseño del producto | 3d | 2019-10-16 | 2019-10-18 | 62 |  | 160d |
| 64 |  | Programación | 15d | 2019-10-21 | 2019-11-11 | 63 |  | 160d |
| 65 |  | Integración y prueba | 4d | 2019-11-12 | 2019-11-15 | 64 |  | 160d |
| 66 | 1.4.3 | **Gestión de cuentas** | 23d | 2020-10-16 | 2020-11-17 | 34 |  | 92d |
| 67 |  | Planificación | 1d | 2020-10-16 | 2020-10-16 |  |  | 92d |
| 68 |  | Diseño del producto | 3d | 2020-10-19 | 2020-10-21 | 67 |  | 92d |
| 69 |  | Programación | 15d | 2020-10-22 | 2020-11-11 | 68 |  | 92d |
| 70 |  | Integración y prueba | 4d | 2020-11-12 | 2020-11-17 | 69 |  | 92d |

## Version 2 (saved 2019-04-18, file GestiónProyecto_Llamathrust_Optimizado.mpp)

Note of the change: Tareas-Recursos optimizados v1 :sunglasses:

Last finish 2021-03-25 → 2020-09-28 (-178d).

Changed:

| ID | Task | Start | Finish | Duration | Complete | Total float | Other |
| --- | --- | --- | --- | --- | --- | --- | --- |
| 1 | **Llamathrust** |  | 2021-03-25 → 2020-09-28 (-178d) | 545d → 417d | 13% → 16% |  |  |
| 2 | **Dispositivos Enchufe** |  | 2021-03-25 → 2020-09-28 (-178d) | 545d → 417d | 12% → 15% |  |  |
| 3 | **Tomar datos de los sensores** |  | 2019-07-31 → 2019-05-23 (-69d) | 124d → 75d | 42% → 70% |  |  |
| 6 | Programación |  | 2019-07-01 → 2019-05-08 (-54d) | 76d → 38d | 36% → 71% |  | resources Scrum Master; Técnico → Scrum Master; Técnico; Analista; Programador |
| 7 | Integración y prueba | 2019-07-02 → 2019-05-09 (-54d) | 2019-07-31 → 2019-05-23 (-69d) | 22d → 11d |  |  | resources Scrum Master; Técnico → Scrum Master; Técnico; Analista; Programador |
| 8 | **Conectar los enchufes con la puerta de enlace** | 2019-08-01 → 2019-05-24 (-69d) | 2020-03-31 → 2019-11-28 (-124d) | 164d → 131d |  |  |  |
| 9 | Planificación | 2019-08-01 → 2019-05-24 (-69d) | 2019-08-13 → 2019-06-04 (-70d) |  |  |  | resources Scrum Master; Técnico → Scrum Master |
| 10 | Diseño del producto | 2019-08-14 → 2019-06-05 (-70d) | 2019-09-12 → 2019-07-03 (-71d) |  |  |  | resources Scrum Master; Técnico → Scrum Master |
| 11 | Programación | 2019-09-13 → 2019-07-04 (-71d) | 2020-02-11 → 2019-11-11 (-92d) | 96d → 89d |  |  |  |
| 12 | Integración y prueba | 2020-02-12 → 2019-11-12 (-92d) | 2020-03-31 → 2019-11-28 (-124d) | 32d → 13d |  |  | resources Scrum Master; Técnico → Scrum Master; Técnico; Analista; Programador |
| 13 | **Gestión de tareas que tomarán los datos periódicamente** | 2020-09-07 → 2020-03-27 (-164d) | 2021-03-25 → 2020-09-28 (-178d) | 144d → 132d |  |  |  |
| 14 | Planificación | 2020-09-07 → 2020-03-27 (-164d) | 2020-09-16 → 2020-04-07 (-162d) |  |  |  |  |
| 15 | Diseño del producto | 2020-09-17 → 2020-04-08 (-162d) | 2020-10-15 → 2020-05-07 (-161d) | 21d → 22d |  |  |  |
| 16 | Programación | 2020-10-16 → 2020-05-08 (-161d) | 2021-02-17 → 2020-09-09 (-161d) |  |  |  |  |
| 17 | Integración y prueba | 2021-02-18 → 2020-09-10 (-161d) | 2021-03-25 → 2020-09-28 (-178d) | 26d → 13d |  |  | resources Analista; Programador → Analista; Programador; Scrum Master; Técnico |
| 18 | **Dispositivos de puerta de enlace** | 2020-04-01 → 2019-11-29 (-124d) | 2020-10-15 → 2020-05-18 (-150d) | 142d → 116d |  |  |  |
| 19 | **Conectar la puerta de enlace con los enchufes** | 2020-04-01 → 2019-11-29 (-124d) | 2020-04-29 → 2019-12-17 (-134d) | 21d → 11d |  |  |  |
| 20 | Planificación | 2020-04-01 → 2019-11-29 (-124d) | 2020-04-01 → 2019-11-29 (-124d) |  |  |  |  |
| 21 | Diseño del producto | 2020-04-02 → 2019-12-02 (-122d) | 2020-04-06 → 2019-12-02 (-126d) | 3d → 1d |  |  | resources Scrum Master; Técnico → Scrum Master; Técnico; Programador; Analista |
| 22 | Programación | 2020-04-07 → 2019-12-03 (-126d) | 2020-04-23 → 2019-12-13 (-132d) | 13d → 7d |  |  | resources Scrum Master; Técnico → Scrum Master; Técnico; Analista; Programador |
| 23 | Integración y prueba | 2020-04-24 → 2019-12-13 (-133d) | 2020-04-29 → 2019-12-17 (-134d) | 4d → 2d |  |  | resources Scrum Master; Técnico → Scrum Master; Técnico; Analista; Programador |
| 24 | **Conectar la puerta de enlace con la base de datos** | 2020-08-14 → 2020-03-04 (-163d) | 2020-09-04 → 2020-03-26 (-162d) |  |  |  |  |
| 25 | Planificación | 2020-08-14 → 2020-03-04 (-163d) | 2020-08-14 → 2020-03-04 (-163d) |  |  |  |  |
| 26 | Diseño del producto | 2020-08-17 → 2020-03-05 (-165d) | 2020-08-18 → 2020-03-06 (-165d) |  |  |  |  |
| 27 | Programación | 2020-08-19 → 2020-03-09 (-163d) | 2020-09-01 → 2020-03-23 (-162d) |  |  |  |  |
| 28 | Integración y prueba | 2020-09-02 → 2020-03-24 (-162d) | 2020-09-04 → 2020-03-26 (-162d) |  |  |  |  |
| 29 | **Procesar las medidas recibidas de los sensores** | 2020-04-30 → 2019-12-18 (-134d) | 2020-07-06 → 2020-01-23 (-165d) | 48d → 24d |  |  |  |
| 30 | Planificación | 2020-04-30 → 2019-12-18 (-134d) | 2020-05-01 → 2019-12-18 (-135d) | 2d → 1d |  |  | resources Scrum Master; Técnico → Scrum Master; Técnico; Analista |
| 31 | Diseño del producto | 2020-05-04 → 2019-12-19 (-137d) | 2020-05-08 → 2019-12-26 (-134d) |  |  |  | resources Scrum Master; Técnico → Scrum Master; Técnico; Analista |
| 32 | Progamación | 2020-05-11 → 2019-12-27 (-136d) | 2020-06-11 → 2020-01-20 (-143d) | 24d → 15d |  |  | resources Scrum Master; Técnico → Scrum Master; Técnico; Analista; Programador |
| 33 | Integración y prueba | 2020-06-12 → 2020-01-21 (-143d) | 2020-07-06 → 2020-01-23 (-165d) | 13d → 3d |  |  | resources Scrum Master; Técnico → Scrum Master; Técnico; Analista; Programador |
| 34 | **Enlazar la puerta enlace con la aplicación de usuario** | 2020-09-02 → 2020-04-03 (-152d) | 2020-10-15 → 2020-05-18 (-150d) |  |  | 92d → 72d |  |
| 35 | Planificación | 2020-09-02 → 2020-04-03 (-152d) | 2020-09-02 → 2020-04-03 (-152d) |  |  | 92d → 72d |  |
| 36 | Diseño del producto | 2020-09-03 → 2020-04-06 (-150d) | 2020-09-09 → 2020-04-10 (-152d) |  |  | 92d → 72d |  |
| 37 | Programación | 2020-09-10 → 2020-04-13 (-150d) | 2020-10-07 → 2020-05-08 (-152d) |  |  | 92d → 72d |  |
| 38 | Integración y prueba | 2020-10-08 → 2020-05-11 (-150d) | 2020-10-15 → 2020-05-18 (-150d) |  |  | 92d → 72d |  |
| 39 | **Aplicación de clientes** |  | 2020-09-01 → 2020-04-02 (-152d) | 398d → 290d | 41% → 40% | 92d → 72d |  |
| 45 | **Enlazar la aplicación con la base de datos** | 2020-07-07 → 2020-01-24 (-165d) | 2020-08-13 → 2020-03-03 (-163d) |  |  |  |  |
| 46 | Planificación | 2020-07-07 → 2020-01-24 (-165d) | 2020-07-07 → 2020-01-24 (-165d) |  |  |  |  |
| 47 | Diseño del producto | 2020-07-08 → 2020-01-27 (-163d) | 2020-07-13 → 2020-01-30 (-165d) |  |  |  |  |
| 48 | Progamación | 2020-07-14 → 2020-01-31 (-165d) | 2020-08-06 → 2020-02-25 (-163d) |  |  |  |  |
| 49 | Integración y prueba | 2020-08-07 → 2020-02-26 (-163d) | 2020-08-13 → 2020-03-03 (-163d) |  |  |  |  |
| 50 | **Mostrar los datos recibidos en la interfaz** | 2020-07-07 → 2020-01-24 (-165d) | 2020-09-01 → 2020-04-02 (-152d) | 41d → 49d |  | 92d → 70d |  |
| 51 | Planificación | 2020-07-07 → 2020-01-24 (-165d) | 2020-07-08 → 2020-01-27 (-163d) |  |  | 92d → 70d |  |
| 52 | Diseño del producto | 2020-07-09 → 2020-01-28 (-163d) | 2020-07-16 → 2020-02-04 (-163d) |  |  | 92d → 70d |  |
| 53 | Programación | 2020-07-17 → 2020-02-05 (-163d) | 2020-08-21 → 2020-03-24 (-150d) | 26d → 27d |  | 92d → 70d |  |
| 54 | Integración y prueba | 2020-08-24 → 2020-03-25 (-152d) | 2020-09-01 → 2020-04-02 (-152d) |  |  | 92d → 72d |  |
| 55 | **Base de datos** | 2019-08-09 → 2019-05-24 (-77d) | 2020-11-17 → 2020-06-18 (-152d) | 324d → 270d |  | 92d → 72d |  |
| 56 | **Crear la estructura de los datos** | 2019-08-09 → 2019-05-24 (-77d) | 2019-10-14 → 2019-08-16 (-59d) | 45d → 59d |  | 160d → 74d |  |
| 57 | Planificación | 2019-08-09 → 2019-05-24 (-77d) | 2019-08-19 → 2019-05-27 (-84d) | 3d → 2d |  | 159d → 92d |  |
| 58 | Diseño del producto | 2019-08-20 → 2019-05-28 (-84d) | 2019-08-27 → 2019-06-04 (-84d) |  |  | 159d → 92d |  |
| 59 | Programación | 2019-08-28 → 2019-06-05 (-84d) | 2019-10-02 → 2019-07-10 (-84d) |  |  | 159d → 92d |  |
| 60 | Integración y prueba | 2019-10-03 → 2019-07-11 (-84d) | 2019-10-14 → 2019-08-16 (-59d) | 7d → 12d |  | 160d → 74d |  |
| 61 | **Recibir peticiones externas** | 2019-10-15 → 2019-08-19 (-57d) | 2019-11-15 → 2019-09-18 (-58d) |  |  | 160d → 74d |  |
| 62 | Planificación | 2019-10-15 → 2019-08-19 (-57d) | 2019-10-15 → 2019-08-19 (-57d) |  |  | 160d → 74d |  |
| 63 | Diseño del producto | 2019-10-16 → 2019-08-20 (-57d) | 2019-10-18 → 2019-08-22 (-57d) |  |  | 160d → 74d |  |
| 64 | Programación | 2019-10-21 → 2019-08-23 (-59d) | 2019-11-11 → 2019-09-12 (-60d) |  |  | 160d → 74d |  |
| 65 | Integración y prueba | 2019-11-12 → 2019-09-13 (-60d) | 2019-11-15 → 2019-09-18 (-58d) |  |  | 160d → 84d |  |
| 66 | **Gestión de cuentas** | 2020-10-16 → 2020-05-19 (-150d) | 2020-11-17 → 2020-06-18 (-152d) |  |  | 92d → 72d |  |
| 67 | Planificación | 2020-10-16 → 2020-05-19 (-150d) | 2020-10-16 → 2020-05-19 (-150d) |  |  | 92d → 72d |  |
| 68 | Diseño del producto | 2020-10-19 → 2020-05-20 (-152d) | 2020-10-21 → 2020-05-22 (-152d) |  |  | 92d → 72d |  |
| 69 | Programación | 2020-10-22 → 2020-05-25 (-150d) | 2020-11-11 → 2020-06-12 (-152d) |  |  | 92d → 72d |  |
| 70 | Integración y prueba | 2020-11-12 → 2020-06-15 (-150d) | 2020-11-17 → 2020-06-18 (-152d) |  |  | 92d → 72d | resources Scrum Master; Técnico → Técnico |

## Version 3 (saved 2019-04-18, file GestiónProyecto_Llamathrust_Optimizado_v2_Experimentos.mpp)

Note of the change: completado hasta seguimiento y control

Last finish 2020-09-28 → 2020-09-02 (-26d).

Changed:

| ID | Task | Start | Finish | Duration | Complete | Total float | Other |
| --- | --- | --- | --- | --- | --- | --- | --- |
| 1 | **Llamathrust** |  | 2020-09-28 → 2020-09-02 (-26d) | 417d → 399d |  |  |  |
| 2 | **Dispositivos Enchufe** |  | 2020-09-28 → 2020-09-02 (-26d) | 417d → 399d | 15% → 17% |  |  |
| 8 | **Conectar los enchufes con la puerta de enlace** |  | 2019-11-28 → 2019-11-04 (-24d) | 131d → 113d |  | 0d → 18d |  |
| 11 | Programación |  | 2019-11-11 → 2019-10-15 (-27d) | 89d → 71d |  | 0d → 18d | constraint none → start no earlier than 2019-07-04; resources Scrum Master; Técnico → Scrum Master; Técnico; Analista [25%]; Programador [25%] |
| 12 | Integración y prueba | 2019-11-12 → 2019-10-16 (-27d) | 2019-11-28 → 2019-11-04 (-24d) |  |  | 0d → 18d |  |
| 13 | **Gestión de tareas que tomarán los datos periódicamente** | 2020-03-27 → 2020-03-26 (-1d) | 2020-09-28 → 2020-09-02 (-26d) | 132d → 115d |  |  |  |
| 14 | Planificación | 2020-03-27 → 2020-03-26 (-1d) | 2020-04-07 → 2020-04-06 (-1d) |  |  | 0d → 1d |  |
| 15 | Diseño del producto | 2020-04-08 → 2020-04-07 (-1d) | 2020-05-07 → 2020-05-06 (-1d) |  |  | 0d → 1d |  |
| 16 | Programación |  | 2020-09-09 → 2020-08-14 (-26d) | 89d → 71d |  |  | constraint none → start no earlier than 2020-05-08; resources Analista; Programador → Analista; Programador; Scrum Master [25%]; Técnico [25%] |
| 17 | Integración y prueba | 2020-09-10 → 2020-08-17 (-24d) | 2020-09-28 → 2020-09-02 (-26d) |  |  |  |  |
| 18 | **Dispositivos de puerta de enlace** | 2019-11-29 → 2019-11-05 (-24d) | 2020-05-18 → 2020-05-15 (-3d) | 116d → 133d |  | 0d → 18d |  |
| 19 | **Conectar la puerta de enlace con los enchufes** | 2019-11-29 → 2019-11-05 (-24d) | 2019-12-17 → 2019-11-19 (-28d) |  |  | 0d → 18d |  |
| 20 | Planificación | 2019-11-29 → 2019-11-05 (-24d) | 2019-11-29 → 2019-11-05 (-24d) |  |  | 0d → 18d |  |
| 21 | Diseño del producto | 2019-12-02 → 2019-11-06 (-26d) | 2019-12-02 → 2019-11-06 (-26d) |  |  | 0d → 18d |  |
| 22 | Programación | 2019-12-03 → 2019-11-07 (-26d) | 2019-12-13 → 2019-11-15 (-28d) |  |  | 0d → 18d |  |
| 23 | Integración y prueba | 2019-12-13 → 2019-11-15 (-28d) | 2019-12-17 → 2019-11-19 (-28d) |  |  | 0d → 18d |  |
| 24 | **Conectar la puerta de enlace con la base de datos** | 2020-03-04 → 2020-03-03 (-1d) | 2020-03-26 → 2020-03-25 (-1d) |  |  | 0d → 1d |  |
| 25 | Planificación | 2020-03-04 → 2020-03-03 (-1d) | 2020-03-04 → 2020-03-03 (-1d) |  |  | 0d → 1d |  |
| 26 | Diseño del producto | 2020-03-05 → 2020-03-04 (-1d) | 2020-03-06 → 2020-03-05 (-1d) |  |  | 0d → 1d |  |
| 27 | Programación | 2020-03-09 → 2020-03-06 (-3d) | 2020-03-23 → 2020-03-20 (-3d) |  |  | 0d → 1d |  |
| 28 | Integración y prueba | 2020-03-24 → 2020-03-23 (-1d) | 2020-03-26 → 2020-03-25 (-1d) |  |  | 0d → 1d |  |
| 29 | **Procesar las medidas recibidas de los sensores** | 2019-12-18 → 2019-11-20 (-28d) | 2020-01-23 → 2020-01-22 (-1d) | 24d → 41d |  | 0d → 1d |  |
| 30 | Planificación | 2019-12-18 → 2019-11-20 (-28d) | 2019-12-18 → 2019-11-20 (-28d) |  |  | 0d → 18d |  |
| 31 | Diseño del producto | 2019-12-19 → 2019-11-21 (-28d) | 2019-12-26 → 2019-11-27 (-29d) |  |  | 0d → 18d |  |
| 32 | Progamación | 2019-12-27 → 2019-11-28 (-29d) | 2020-01-20 → 2020-01-06 (-14d) | 15d → 13d |  | 0d → 10d |  |
| 33 | Integración y prueba | 2020-01-21 → 2020-01-07 (-14d) | 2020-01-23 → 2020-01-22 (-1d) | 3d → 10d |  | 0d → 1d |  |
| 34 | **Enlazar la puerta enlace con la aplicación de usuario** | 2020-04-03 → 2020-04-02 (-1d) | 2020-05-18 → 2020-05-15 (-3d) |  |  | 72d → 45d |  |
| 35 | Planificación | 2020-04-03 → 2020-04-02 (-1d) | 2020-04-03 → 2020-04-02 (-1d) |  |  | 72d → 45d |  |
| 36 | Diseño del producto | 2020-04-06 → 2020-04-03 (-3d) | 2020-04-10 → 2020-04-09 (-1d) |  |  | 72d → 45d |  |
| 37 | Programación | 2020-04-13 → 2020-04-10 (-3d) | 2020-05-08 → 2020-05-07 (-1d) |  |  | 72d → 45d |  |
| 38 | Integración y prueba | 2020-05-11 → 2020-05-08 (-3d) | 2020-05-18 → 2020-05-15 (-3d) |  |  | 72d → 55d |  |
| 39 | **Aplicación de clientes** |  | 2020-04-02 → 2020-04-01 (-1d) | 290d → 289d | 40% → 38% | 72d → 45d |  |
| 45 | **Enlazar la aplicación con la base de datos** | 2020-01-24 → 2020-01-23 (-1d) | 2020-03-03 → 2020-03-02 (-1d) |  |  | 0d → 1d |  |
| 46 | Planificación | 2020-01-24 → 2020-01-23 (-1d) | 2020-01-24 → 2020-01-23 (-1d) |  |  | 0d → 1d |  |
| 47 | Diseño del producto | 2020-01-27 → 2020-01-24 (-3d) | 2020-01-30 → 2020-01-29 (-1d) |  |  | 0d → 1d |  |
| 48 | Progamación | 2020-01-31 → 2020-01-30 (-1d) | 2020-02-25 → 2020-02-24 (-1d) |  |  | 0d → 1d |  |
| 49 | Integración y prueba | 2020-02-26 → 2020-02-25 (-1d) | 2020-03-03 → 2020-03-02 (-1d) |  |  | 0d → 1d |  |
| 50 | **Mostrar los datos recibidos en la interfaz** | 2020-01-24 → 2020-01-23 (-1d) | 2020-04-02 → 2020-04-01 (-1d) |  |  | 70d → 45d |  |
| 51 | Planificación | 2020-01-24 → 2020-01-23 (-1d) | 2020-01-27 → 2020-01-24 (-3d) |  |  | 70d → 53d |  |
| 52 | Diseño del producto | 2020-01-28 → 2020-01-27 (-1d) | 2020-02-04 → 2020-02-03 (-1d) |  |  | 70d → 53d |  |
| 53 | Programación | 2020-02-05 → 2020-02-04 (-1d) | 2020-03-24 → 2020-03-10 (-14d) | 27d → 26d |  | 70d → 53d |  |
| 54 | Integración y prueba | 2020-03-25 → 2020-03-11 (-14d) | 2020-04-02 → 2020-04-01 (-1d) | 7d → 14d |  | 72d → 45d |  |
| 55 | **Base de datos** |  | 2020-06-18 → 2020-06-17 (-1d) | 270d → 269d |  | 72d → 55d |  |
| 66 | **Gestión de cuentas** | 2020-05-19 → 2020-05-18 (-1d) | 2020-06-18 → 2020-06-17 (-1d) |  |  | 72d → 55d |  |
| 67 | Planificación | 2020-05-19 → 2020-05-18 (-1d) | 2020-05-19 → 2020-05-18 (-1d) |  |  | 72d → 55d |  |
| 68 | Diseño del producto | 2020-05-20 → 2020-05-19 (-1d) | 2020-05-22 → 2020-05-21 (-1d) |  |  | 72d → 55d |  |
| 69 | Programación | 2020-05-25 → 2020-05-22 (-3d) | 2020-06-12 → 2020-06-11 (-1d) |  |  | 72d → 55d |  |
| 70 | Integración y prueba | 2020-06-15 → 2020-06-12 (-3d) | 2020-06-18 → 2020-06-17 (-1d) |  |  | 72d → 55d |  |

## Version 4 (data date 2019-05-11, saved 2019-04-20, file GestiónProyecto_Llamathrust_Optimizado_v2 _Control.mpp)

Note of the change: PELC2

Last finish stays 2020-09-02.

Changed:

| ID | Task | Duration | Complete | Total float |
| --- | --- | --- | --- | --- |
| 1 | **Llamathrust** | 399d → 399d? | 16% → 17% |  |
| 2 | **Dispositivos Enchufe** |  | 17% → 18% |  |
| 3 | **Tomar datos de los sensores** |  | 70% → 75% |  |
| 6 | Programación |  | 71% → 80% |  |
| 18 | **Dispositivos de puerta de enlace** | 133d → 133d? |  | 18d → 0d |

## Version 5 (data date 2019-05-11, saved 2019-04-20, file GestiónProyecto_Llamathrust_Optimizado_v2_Experimentos.mpp)

Note of the change: PELC2

Last finish stays 2020-09-02.

Changed:

| ID | Task | Start | Finish | Duration | Complete | Total float | Other |
| --- | --- | --- | --- | --- | --- | --- | --- |
| 1 | **Llamathrust** |  |  | 399d? → 399d | 17% → 18% |  | baseline start none → 2019-02-04; baseline finish none → 2020-09-02 |
| 2 | **Dispositivos Enchufe** |  |  |  |  |  | baseline start none → 2019-02-04; baseline finish none → 2020-09-02 |
| 3 | **Tomar datos de los sensores** |  |  |  |  |  | baseline start none → 2019-02-04; baseline finish none → 2019-05-23 |
| 4 | Planificación |  |  |  |  |  | baseline start none → 2019-02-04; baseline finish none → 2019-02-12 |
| 5 | Diseño del producto |  |  |  |  |  | baseline start none → 2019-02-13; baseline finish none → 2019-03-08 |
| 6 | Programación |  |  |  |  |  | baseline start none → 2019-03-11; baseline finish none → 2019-05-08 |
| 7 | Integración y prueba |  |  |  |  |  | baseline start none → 2019-05-09; baseline finish none → 2019-05-23 |
| 8 | **Conectar los enchufes con la puerta de enlace** |  |  |  |  |  | baseline start none → 2019-05-24; baseline finish none → 2019-11-04 |
| 9 | Planificación |  |  |  |  |  | baseline start none → 2019-05-24; baseline finish none → 2019-06-04 |
| 10 | Diseño del producto |  |  |  |  |  | baseline start none → 2019-06-05; baseline finish none → 2019-07-03 |
| 11 | Programación |  |  |  |  |  | baseline start none → 2019-07-04; baseline finish none → 2019-10-15 |
| 12 | Integración y prueba |  |  |  |  |  | baseline start none → 2019-10-16; baseline finish none → 2019-11-04 |
| 13 | **Gestión de tareas que tomarán los datos periódicamente** |  |  |  |  |  | baseline start none → 2020-03-26; baseline finish none → 2020-09-02 |
| 14 | Planificación |  |  |  |  |  | baseline start none → 2020-03-26; baseline finish none → 2020-04-06 |
| 15 | Diseño del producto |  |  |  |  |  | baseline start none → 2020-04-07; baseline finish none → 2020-05-06 |
| 16 | Programación |  |  |  |  |  | baseline start none → 2020-05-08; baseline finish none → 2020-08-14 |
| 17 | Integración y prueba |  |  |  |  |  | baseline start none → 2020-08-17; baseline finish none → 2020-09-02 |
| 18 | **Dispositivos de puerta de enlace** |  |  | 133d? → 133d |  | 0d → 18d | baseline start none → 2019-11-05; baseline finish none → 2020-05-15 |
| 19 | **Conectar la puerta de enlace con los enchufes** |  |  |  |  |  | baseline start none → 2019-11-05; baseline finish none → 2019-11-19 |
| 20 | Planificación |  |  |  |  |  | baseline start none → 2019-11-05; baseline finish none → 2019-11-05 |
| 21 | Diseño del producto |  |  |  |  |  | baseline start none → 2019-11-06; baseline finish none → 2019-11-06 |
| 22 | Programación |  |  |  |  |  | baseline start none → 2019-11-07; baseline finish none → 2019-11-15 |
| 23 | Integración y prueba |  |  |  |  |  | baseline start none → 2019-11-15; baseline finish none → 2019-11-19 |
| 24 | **Conectar la puerta de enlace con la base de datos** |  |  |  |  |  | baseline start none → 2020-03-03; baseline finish none → 2020-03-25 |
| 25 | Planificación |  |  |  |  |  | baseline start none → 2020-03-03; baseline finish none → 2020-03-03 |
| 26 | Diseño del producto |  |  |  |  |  | baseline start none → 2020-03-04; baseline finish none → 2020-03-05 |
| 27 | Programación |  |  |  |  |  | baseline start none → 2020-03-06; baseline finish none → 2020-03-20 |
| 28 | Integración y prueba |  |  |  |  |  | baseline start none → 2020-03-23; baseline finish none → 2020-03-25 |
| 29 | **Procesar las medidas recibidas de los sensores** |  |  |  |  |  | baseline start none → 2019-11-20; baseline finish none → 2020-01-22 |
| 30 | Planificación |  |  |  |  |  | baseline start none → 2019-11-20; baseline finish none → 2019-11-20 |
| 31 | Diseño del producto |  |  |  |  |  | baseline start none → 2019-11-21; baseline finish none → 2019-11-27 |
| 32 | Progamación |  |  |  |  |  | baseline start none → 2019-11-28; baseline finish none → 2020-01-06 |
| 33 | Integración y prueba |  |  |  |  |  | baseline start none → 2020-01-07; baseline finish none → 2020-01-22 |
| 34 | **Enlazar la puerta enlace con la aplicación de usuario** |  |  |  |  |  | baseline start none → 2020-04-02; baseline finish none → 2020-05-15 |
| 35 | Planificación |  |  |  |  |  | baseline start none → 2020-04-02; baseline finish none → 2020-04-02 |
| 36 | Diseño del producto |  |  |  |  |  | baseline start none → 2020-04-03; baseline finish none → 2020-04-09 |
| 37 | Programación |  |  |  |  |  | baseline start none → 2020-04-10; baseline finish none → 2020-05-07 |
| 38 | Integración y prueba |  |  |  |  |  | baseline start none → 2020-05-08; baseline finish none → 2020-05-15 |
| 39 | **Aplicación de clientes** |  |  |  | 38% → 42% |  | baseline start none → 2019-02-04; baseline finish none → 2020-04-01 |
| 40 | **Creación de la interfaz** |  | 2019-04-09 A → 2019-04-22 A (+13d) | 47d → 54d |  |  | baseline start none → 2019-02-04; baseline finish none → 2019-04-22 |
| 41 | Planificación |  |  |  |  |  | baseline start none → 2019-02-04; baseline finish none → 2019-02-05 |
| 42 | Diseño del producto |  |  |  |  |  | baseline start none → 2019-02-06; baseline finish none → 2019-02-14 |
| 43 | Programación |  | 2019-03-28 A → 2019-04-08 A (+11d) | 30d → 37d |  |  | baseline start none → 2019-02-15; baseline finish none → 2019-04-08 |
| 44 | Integración y prueba | 2019-03-29 A → 2019-04-09 A (+11d) | 2019-04-09 A → 2019-04-22 A (+13d) |  |  |  | baseline start none → 2019-04-09; baseline finish none → 2019-04-22 |
| 45 | **Enlazar la aplicación con la base de datos** |  |  |  |  |  | baseline start none → 2020-01-23; baseline finish none → 2020-03-02 |
| 46 | Planificación |  |  |  |  |  | baseline start none → 2020-01-23; baseline finish none → 2020-01-23 |
| 47 | Diseño del producto |  |  |  |  |  | baseline start none → 2020-01-24; baseline finish none → 2020-01-29 |
| 48 | Progamación |  |  |  |  |  | baseline start none → 2020-01-30; baseline finish none → 2020-02-24 |
| 49 | Integración y prueba |  |  |  |  |  | baseline start none → 2020-02-25; baseline finish none → 2020-03-02 |
| 50 | **Mostrar los datos recibidos en la interfaz** |  |  |  |  |  | baseline start none → 2020-01-23; baseline finish none → 2020-04-01 |
| 51 | Planificación |  |  |  |  |  | baseline start none → 2020-01-23; baseline finish none → 2020-01-24 |
| 52 | Diseño del producto |  |  |  |  |  | baseline start none → 2020-01-27; baseline finish none → 2020-02-03 |
| 53 | Programación |  |  |  |  |  | baseline start none → 2020-02-04; baseline finish none → 2020-03-10 |
| 54 | Integración y prueba |  |  |  |  |  | baseline start none → 2020-03-11; baseline finish none → 2020-04-01 |
| 55 | **Base de datos** |  |  |  |  |  | baseline start none → 2019-05-24; baseline finish none → 2020-06-17 |
| 56 | **Crear la estructura de los datos** |  |  |  |  |  | baseline start none → 2019-05-24; baseline finish none → 2019-08-16 |
| 57 | Planificación |  |  |  |  |  | baseline start none → 2019-05-24; baseline finish none → 2019-05-27 |
| 58 | Diseño del producto |  |  |  |  |  | baseline start none → 2019-05-28; baseline finish none → 2019-06-04 |
| 59 | Programación |  |  |  |  |  | baseline start none → 2019-06-05; baseline finish none → 2019-07-10 |
| 60 | Integración y prueba |  |  |  |  |  | baseline start none → 2019-07-11; baseline finish none → 2019-08-16 |
| 61 | **Recibir peticiones externas** |  |  |  |  |  | baseline start none → 2019-08-19; baseline finish none → 2019-09-18 |
| 62 | Planificación |  |  |  |  |  | baseline start none → 2019-08-19; baseline finish none → 2019-08-19 |
| 63 | Diseño del producto |  |  |  |  |  | baseline start none → 2019-08-20; baseline finish none → 2019-08-22 |
| 64 | Programación |  |  |  |  |  | baseline start none → 2019-08-23; baseline finish none → 2019-09-12 |
| 65 | Integración y prueba |  |  |  |  |  | baseline start none → 2019-09-13; baseline finish none → 2019-09-18 |
| 66 | **Gestión de cuentas** |  |  |  |  |  | baseline start none → 2020-05-18; baseline finish none → 2020-06-17 |
| 67 | Planificación |  |  |  |  |  | baseline start none → 2020-05-18; baseline finish none → 2020-05-18 |
| 68 | Diseño del producto |  |  |  |  |  | baseline start none → 2020-05-19; baseline finish none → 2020-05-21 |
| 69 | Programación |  |  |  |  |  | baseline start none → 2020-05-22; baseline finish none → 2020-06-11 |
| 70 | Integración y prueba |  |  |  |  |  | baseline start none → 2020-06-12; baseline finish none → 2020-06-17 |

## Version 6 (data date 2019-05-11, saved 2019-04-20, file GestiónProyecto_Llamathrust_Optimizado_v2.mpp)

Note of the change: PELC2

Last finish stays 2020-09-02.

Changed:

| ID | Task | Start | Finish | Duration | Complete | Total float | Other |
| --- | --- | --- | --- | --- | --- | --- | --- |
| 1 | **Llamathrust** |  |  | 399d → 399d? | 18% → 17% |  | baseline start 2019-02-04 → none; baseline finish 2020-09-02 → none |
| 2 | **Dispositivos Enchufe** |  |  |  |  |  | baseline start 2019-02-04 → none; baseline finish 2020-09-02 → none |
| 3 | **Tomar datos de los sensores** |  |  |  |  |  | baseline start 2019-02-04 → none; baseline finish 2019-05-23 → none |
| 4 | Planificación |  |  |  |  |  | baseline start 2019-02-04 → none; baseline finish 2019-02-12 → none |
| 5 | Diseño del producto |  |  |  |  |  | baseline start 2019-02-13 → none; baseline finish 2019-03-08 → none |
| 6 | Programación |  |  |  |  |  | baseline start 2019-03-11 → none; baseline finish 2019-05-08 → none |
| 7 | Integración y prueba |  |  |  |  |  | baseline start 2019-05-09 → none; baseline finish 2019-05-23 → none |
| 8 | **Conectar los enchufes con la puerta de enlace** |  |  |  |  |  | baseline start 2019-05-24 → none; baseline finish 2019-11-04 → none |
| 9 | Planificación |  |  |  |  |  | baseline start 2019-05-24 → none; baseline finish 2019-06-04 → none |
| 10 | Diseño del producto |  |  |  |  |  | baseline start 2019-06-05 → none; baseline finish 2019-07-03 → none |
| 11 | Programación |  |  |  |  |  | baseline start 2019-07-04 → none; baseline finish 2019-10-15 → none |
| 12 | Integración y prueba |  |  |  |  |  | baseline start 2019-10-16 → none; baseline finish 2019-11-04 → none |
| 13 | **Gestión de tareas que tomarán los datos periódicamente** |  |  |  |  |  | baseline start 2020-03-26 → none; baseline finish 2020-09-02 → none |
| 14 | Planificación |  |  |  |  |  | baseline start 2020-03-26 → none; baseline finish 2020-04-06 → none |
| 15 | Diseño del producto |  |  |  |  |  | baseline start 2020-04-07 → none; baseline finish 2020-05-06 → none |
| 16 | Programación |  |  |  |  |  | baseline start 2020-05-08 → none; baseline finish 2020-08-14 → none |
| 17 | Integración y prueba |  |  |  |  |  | baseline start 2020-08-17 → none; baseline finish 2020-09-02 → none |
| 18 | **Dispositivos de puerta de enlace** |  |  | 133d → 133d? |  | 18d → 0d | baseline start 2019-11-05 → none; baseline finish 2020-05-15 → none |
| 20 | **Conectar la puerta de enlace con los enchufes** |  |  |  |  |  | baseline start 2019-11-05 → none; baseline finish 2019-11-19 → none |
| 21 | Planificación |  |  |  |  |  | baseline start 2019-11-05 → none; baseline finish 2019-11-05 → none |
| 22 | Diseño del producto |  |  |  |  |  | baseline start 2019-11-06 → none; baseline finish 2019-11-06 → none |
| 23 | Programación |  |  |  |  |  | baseline start 2019-11-07 → none; baseline finish 2019-11-15 → none |
| 24 | Integración y prueba |  |  |  |  |  | baseline start 2019-11-15 → none; baseline finish 2019-11-19 → none |
| 25 | **Conectar la puerta de enlace con la base de datos** |  |  |  |  |  | baseline start 2020-03-03 → none; baseline finish 2020-03-25 → none |
| 26 | Planificación |  |  |  |  |  | baseline start 2020-03-03 → none; baseline finish 2020-03-03 → none |
| 27 | Diseño del producto |  |  |  |  |  | baseline start 2020-03-04 → none; baseline finish 2020-03-05 → none |
| 28 | Programación |  |  |  |  |  | baseline start 2020-03-06 → none; baseline finish 2020-03-20 → none |
| 29 | Integración y prueba |  |  |  |  |  | baseline start 2020-03-23 → none; baseline finish 2020-03-25 → none |
| 30 | **Procesar las medidas recibidas de los sensores** |  |  |  |  |  | baseline start 2019-11-20 → none; baseline finish 2020-01-22 → none |
| 31 | Planificación |  |  |  |  |  | baseline start 2019-11-20 → none; baseline finish 2019-11-20 → none |
| 32 | Diseño del producto |  |  |  |  |  | baseline start 2019-11-21 → none; baseline finish 2019-11-27 → none |
| 33 | Progamación |  |  |  |  |  | baseline start 2019-11-28 → none; baseline finish 2020-01-06 → none |
| 34 | Integración y prueba |  |  |  |  |  | baseline start 2020-01-07 → none; baseline finish 2020-01-22 → none |
| 35 | **Enlazar la puerta enlace con la aplicación de usuario** |  |  |  |  |  | baseline start 2020-04-02 → none; baseline finish 2020-05-15 → none |
| 36 | Planificación |  |  |  |  |  | baseline start 2020-04-02 → none; baseline finish 2020-04-02 → none |
| 37 | Diseño del producto |  |  |  |  |  | baseline start 2020-04-03 → none; baseline finish 2020-04-09 → none |
| 38 | Programación |  |  |  |  |  | baseline start 2020-04-10 → none; baseline finish 2020-05-07 → none |
| 39 | Integración y prueba |  |  |  |  |  | baseline start 2020-05-08 → none; baseline finish 2020-05-15 → none |
| 40 | **Aplicación de clientes** |  |  |  | 42% → 38% |  | baseline start 2019-02-04 → none; baseline finish 2020-04-01 → none |
| 41 | **Creación de la interfaz** |  | 2019-04-22 A → 2019-04-09 A (-13d) | 54d → 47d |  |  | baseline start 2019-02-04 → none; baseline finish 2019-04-22 → none |
| 42 | Planificación |  |  |  |  |  | baseline start 2019-02-04 → none; baseline finish 2019-02-05 → none |
| 43 | Diseño del producto |  |  |  |  |  | baseline start 2019-02-06 → none; baseline finish 2019-02-14 → none |
| 44 | Programación |  | 2019-04-08 A → 2019-03-28 A (-11d) | 37d → 30d |  |  | baseline start 2019-02-15 → none; baseline finish 2019-04-08 → none |
| 45 | Integración y prueba | 2019-04-09 A → 2019-03-29 A (-11d) | 2019-04-22 A → 2019-04-09 A (-13d) |  |  |  | baseline start 2019-04-09 → none; baseline finish 2019-04-22 → none |
| 46 | **Enlazar la aplicación con la base de datos** |  |  |  |  |  | baseline start 2020-01-23 → none; baseline finish 2020-03-02 → none |
| 47 | Planificación |  |  |  |  |  | baseline start 2020-01-23 → none; baseline finish 2020-01-23 → none |
| 48 | Diseño del producto |  |  |  |  |  | baseline start 2020-01-24 → none; baseline finish 2020-01-29 → none |
| 49 | Progamación |  |  |  |  |  | baseline start 2020-01-30 → none; baseline finish 2020-02-24 → none |
| 50 | Integración y prueba |  |  |  |  |  | baseline start 2020-02-25 → none; baseline finish 2020-03-02 → none |
| 51 | **Mostrar los datos recibidos en la interfaz** |  |  |  |  |  | baseline start 2020-01-23 → none; baseline finish 2020-04-01 → none |
| 52 | Planificación |  |  |  |  |  | baseline start 2020-01-23 → none; baseline finish 2020-01-24 → none |
| 53 | Diseño del producto |  |  |  |  |  | baseline start 2020-01-27 → none; baseline finish 2020-02-03 → none |
| 54 | Programación |  |  |  |  |  | baseline start 2020-02-04 → none; baseline finish 2020-03-10 → none |
| 55 | Integración y prueba |  |  |  |  |  | baseline start 2020-03-11 → none; baseline finish 2020-04-01 → none |
| 56 | **Base de datos** |  |  |  |  |  | baseline start 2019-05-24 → none; baseline finish 2020-06-17 → none |
| 57 | **Crear la estructura de los datos** |  |  |  |  |  | baseline start 2019-05-24 → none; baseline finish 2019-08-16 → none |
| 58 | Planificación |  |  |  |  |  | baseline start 2019-05-24 → none; baseline finish 2019-05-27 → none |
| 59 | Diseño del producto |  |  |  |  |  | baseline start 2019-05-28 → none; baseline finish 2019-06-04 → none |
| 60 | Programación |  |  |  |  |  | baseline start 2019-06-05 → none; baseline finish 2019-07-10 → none |
| 61 | Integración y prueba |  |  |  |  |  | baseline start 2019-07-11 → none; baseline finish 2019-08-16 → none |
| 62 | **Recibir peticiones externas** |  |  |  |  |  | baseline start 2019-08-19 → none; baseline finish 2019-09-18 → none |
| 63 | Planificación |  |  |  |  |  | baseline start 2019-08-19 → none; baseline finish 2019-08-19 → none |
| 64 | Diseño del producto |  |  |  |  |  | baseline start 2019-08-20 → none; baseline finish 2019-08-22 → none |
| 65 | Programación |  |  |  |  |  | baseline start 2019-08-23 → none; baseline finish 2019-09-12 → none |
| 66 | Integración y prueba |  |  |  |  |  | baseline start 2019-09-13 → none; baseline finish 2019-09-18 → none |
| 67 | **Gestión de cuentas** |  |  |  |  |  | baseline start 2020-05-18 → none; baseline finish 2020-06-17 → none |
| 68 | Planificación |  |  |  |  |  | baseline start 2020-05-18 → none; baseline finish 2020-05-18 → none |
| 69 | Diseño del producto |  |  |  |  |  | baseline start 2020-05-19 → none; baseline finish 2020-05-21 → none |
| 70 | Programación |  |  |  |  |  | baseline start 2020-05-22 → none; baseline finish 2020-06-11 → none |
| 71 | Integración y prueba |  |  |  |  |  | baseline start 2020-06-12 → none; baseline finish 2020-06-17 → none |

## Version 7 (data date 2019-05-11, saved 2019-04-20, file GestiónProyecto_Llamathrust_Optimizado_v2_Experimentos.mpp)

Note of the change: intento graficas 1

Last finish stays 2020-09-02.

Changed:

| ID | Task | Start | Finish | Duration | Complete | Total float | Other |
| --- | --- | --- | --- | --- | --- | --- | --- |
| 1 | **Llamathrust** |  |  | 399d? → 399d | 17% → 18% |  | baseline start none → 2019-02-04; baseline finish none → 2020-09-02 |
| 2 | **Dispositivos Enchufe** |  |  |  |  |  | baseline start none → 2019-02-04; baseline finish none → 2020-09-02 |
| 3 | **Tomar datos de los sensores** |  |  |  |  |  | baseline start none → 2019-02-04; baseline finish none → 2019-05-23 |
| 4 | Planificación |  |  |  |  |  | baseline start none → 2019-02-04; baseline finish none → 2019-02-12 |
| 5 | Diseño del producto |  |  |  |  |  | baseline start none → 2019-02-13; baseline finish none → 2019-03-08 |
| 6 | Programación |  |  |  |  |  | baseline start none → 2019-03-11; baseline finish none → 2019-05-08 |
| 7 | Integración y prueba |  |  |  |  |  | baseline start none → 2019-05-09; baseline finish none → 2019-05-23 |
| 8 | **Conectar los enchufes con la puerta de enlace** |  |  |  |  |  | baseline start none → 2019-05-24; baseline finish none → 2019-11-04 |
| 9 | Planificación |  |  |  |  |  | baseline start none → 2019-05-24; baseline finish none → 2019-06-04 |
| 10 | Diseño del producto |  |  |  |  |  | baseline start none → 2019-06-05; baseline finish none → 2019-07-03 |
| 11 | Programación |  |  |  |  |  | baseline start none → 2019-07-04; baseline finish none → 2019-10-15 |
| 12 | Integración y prueba |  |  |  |  |  | baseline start none → 2019-10-16; baseline finish none → 2019-11-04 |
| 13 | **Gestión de tareas que tomarán los datos periódicamente** |  |  |  |  |  | baseline start none → 2020-03-26; baseline finish none → 2020-09-02 |
| 14 | Planificación |  |  |  |  |  | baseline start none → 2020-03-26; baseline finish none → 2020-04-06 |
| 15 | Diseño del producto |  |  |  |  |  | baseline start none → 2020-04-07; baseline finish none → 2020-05-06 |
| 16 | Programación |  |  |  |  |  | baseline start none → 2020-05-08; baseline finish none → 2020-08-14 |
| 17 | Integración y prueba |  |  |  |  |  | baseline start none → 2020-08-17; baseline finish none → 2020-09-02 |
| 18 | **Dispositivos de puerta de enlace** |  |  | 133d? → 133d |  | 0d → 18d | baseline start none → 2019-11-05; baseline finish none → 2020-05-15 |
| 19 | **Conectar la puerta de enlace con los enchufes** |  |  |  |  |  | baseline start none → 2019-11-05; baseline finish none → 2019-11-19 |
| 20 | Planificación |  |  |  |  |  | baseline start none → 2019-11-05; baseline finish none → 2019-11-05 |
| 21 | Diseño del producto |  |  |  |  |  | baseline start none → 2019-11-06; baseline finish none → 2019-11-06 |
| 22 | Programación |  |  |  |  |  | baseline start none → 2019-11-07; baseline finish none → 2019-11-15 |
| 23 | Integración y prueba |  |  |  |  |  | baseline start none → 2019-11-15; baseline finish none → 2019-11-19 |
| 24 | **Conectar la puerta de enlace con la base de datos** |  |  |  |  |  | baseline start none → 2020-03-03; baseline finish none → 2020-03-25 |
| 25 | Planificación |  |  |  |  |  | baseline start none → 2020-03-03; baseline finish none → 2020-03-03 |
| 26 | Diseño del producto |  |  |  |  |  | baseline start none → 2020-03-04; baseline finish none → 2020-03-05 |
| 27 | Programación |  |  |  |  |  | baseline start none → 2020-03-06; baseline finish none → 2020-03-20 |
| 28 | Integración y prueba |  |  |  |  |  | baseline start none → 2020-03-23; baseline finish none → 2020-03-25 |
| 29 | **Procesar las medidas recibidas de los sensores** |  |  |  |  |  | baseline start none → 2019-11-20; baseline finish none → 2020-01-22 |
| 30 | Planificación |  |  |  |  |  | baseline start none → 2019-11-20; baseline finish none → 2019-11-20 |
| 31 | Diseño del producto |  |  |  |  |  | baseline start none → 2019-11-21; baseline finish none → 2019-11-27 |
| 32 | Progamación |  |  |  |  |  | baseline start none → 2019-11-28; baseline finish none → 2020-01-06 |
| 33 | Integración y prueba |  |  |  |  |  | baseline start none → 2020-01-07; baseline finish none → 2020-01-22 |
| 34 | **Enlazar la puerta enlace con la aplicación de usuario** |  |  |  |  |  | baseline start none → 2020-04-02; baseline finish none → 2020-05-15 |
| 35 | Planificación |  |  |  |  |  | baseline start none → 2020-04-02; baseline finish none → 2020-04-02 |
| 36 | Diseño del producto |  |  |  |  |  | baseline start none → 2020-04-03; baseline finish none → 2020-04-09 |
| 37 | Programación |  |  |  |  |  | baseline start none → 2020-04-10; baseline finish none → 2020-05-07 |
| 38 | Integración y prueba |  |  |  |  |  | baseline start none → 2020-05-08; baseline finish none → 2020-05-15 |
| 39 | **Aplicación de clientes** |  |  |  | 38% → 42% |  | baseline start none → 2019-02-04; baseline finish none → 2020-04-01 |
| 40 | **Creación de la interfaz** |  | 2019-04-09 A → 2019-04-22 A (+13d) | 47d → 54d |  |  | baseline start none → 2019-02-04; baseline finish none → 2019-04-22 |
| 41 | Planificación |  |  |  |  |  | baseline start none → 2019-02-04; baseline finish none → 2019-02-05 |
| 42 | Diseño del producto |  |  |  |  |  | baseline start none → 2019-02-06; baseline finish none → 2019-02-14 |
| 43 | Programación |  | 2019-03-28 A → 2019-04-08 A (+11d) | 30d → 37d |  |  | baseline start none → 2019-02-15; baseline finish none → 2019-04-08 |
| 44 | Integración y prueba | 2019-03-29 A → 2019-04-09 A (+11d) | 2019-04-09 A → 2019-04-22 A (+13d) |  |  |  | baseline start none → 2019-04-09; baseline finish none → 2019-04-22 |
| 45 | **Enlazar la aplicación con la base de datos** |  |  |  |  |  | baseline start none → 2020-01-23; baseline finish none → 2020-03-02 |
| 46 | Planificación |  |  |  |  |  | baseline start none → 2020-01-23; baseline finish none → 2020-01-23 |
| 47 | Diseño del producto |  |  |  |  |  | baseline start none → 2020-01-24; baseline finish none → 2020-01-29 |
| 48 | Progamación |  |  |  |  |  | baseline start none → 2020-01-30; baseline finish none → 2020-02-24 |
| 49 | Integración y prueba |  |  |  |  |  | baseline start none → 2020-02-25; baseline finish none → 2020-03-02 |
| 50 | **Mostrar los datos recibidos en la interfaz** |  |  |  |  |  | baseline start none → 2020-01-23; baseline finish none → 2020-04-01 |
| 51 | Planificación |  |  |  |  |  | baseline start none → 2020-01-23; baseline finish none → 2020-01-24 |
| 52 | Diseño del producto |  |  |  |  |  | baseline start none → 2020-01-27; baseline finish none → 2020-02-03 |
| 53 | Programación |  |  |  |  |  | baseline start none → 2020-02-04; baseline finish none → 2020-03-10 |
| 54 | Integración y prueba |  |  |  |  |  | baseline start none → 2020-03-11; baseline finish none → 2020-04-01 |
| 55 | **Base de datos** |  |  |  |  |  | baseline start none → 2019-05-24; baseline finish none → 2020-06-17 |
| 56 | **Crear la estructura de los datos** |  |  |  |  |  | baseline start none → 2019-05-24; baseline finish none → 2019-08-16 |
| 57 | Planificación |  |  |  |  |  | baseline start none → 2019-05-24; baseline finish none → 2019-05-27 |
| 58 | Diseño del producto |  |  |  |  |  | baseline start none → 2019-05-28; baseline finish none → 2019-06-04 |
| 59 | Programación |  |  |  |  |  | baseline start none → 2019-06-05; baseline finish none → 2019-07-10 |
| 60 | Integración y prueba |  |  |  |  |  | baseline start none → 2019-07-11; baseline finish none → 2019-08-16 |
| 61 | **Recibir peticiones externas** |  |  |  |  |  | baseline start none → 2019-08-19; baseline finish none → 2019-09-18 |
| 62 | Planificación |  |  |  |  |  | baseline start none → 2019-08-19; baseline finish none → 2019-08-19 |
| 63 | Diseño del producto |  |  |  |  |  | baseline start none → 2019-08-20; baseline finish none → 2019-08-22 |
| 64 | Programación |  |  |  |  |  | baseline start none → 2019-08-23; baseline finish none → 2019-09-12 |
| 65 | Integración y prueba |  |  |  |  |  | baseline start none → 2019-09-13; baseline finish none → 2019-09-18 |
| 66 | **Gestión de cuentas** |  |  |  |  |  | baseline start none → 2020-05-18; baseline finish none → 2020-06-17 |
| 67 | Planificación |  |  |  |  |  | baseline start none → 2020-05-18; baseline finish none → 2020-05-18 |
| 68 | Diseño del producto |  |  |  |  |  | baseline start none → 2020-05-19; baseline finish none → 2020-05-21 |
| 69 | Programación |  |  |  |  |  | baseline start none → 2020-05-22; baseline finish none → 2020-06-11 |
| 70 | Integración y prueba |  |  |  |  |  | baseline start none → 2020-06-12; baseline finish none → 2020-06-17 |

## Version 8 (data date 2019-05-11, saved 2019-04-20, file GestiónProyecto_Llamathrust_Optimizado_v2.mpp)

Note of the change: intento graficas 1

Last finish stays 2020-09-02.

Changed:

| ID | Task | Start | Finish | Duration | Complete | Total float | Other |
| --- | --- | --- | --- | --- | --- | --- | --- |
| 1 | **Llamathrust** |  |  | 399d → 399d? | 18% → 17% |  | baseline start 2019-02-04 → none; baseline finish 2020-09-02 → none |
| 2 | **Dispositivos Enchufe** |  |  |  |  |  | baseline start 2019-02-04 → none; baseline finish 2020-09-02 → none |
| 3 | **Tomar datos de los sensores** |  |  |  |  |  | baseline start 2019-02-04 → none; baseline finish 2019-05-23 → none |
| 4 | Planificación |  |  |  |  |  | baseline start 2019-02-04 → none; baseline finish 2019-02-12 → none |
| 5 | Diseño del producto |  |  |  |  |  | baseline start 2019-02-13 → none; baseline finish 2019-03-08 → none |
| 6 | Programación |  |  |  |  |  | baseline start 2019-03-11 → none; baseline finish 2019-05-08 → none |
| 7 | Integración y prueba |  |  |  |  |  | baseline start 2019-05-09 → none; baseline finish 2019-05-23 → none |
| 8 | **Conectar los enchufes con la puerta de enlace** |  |  |  |  |  | baseline start 2019-05-24 → none; baseline finish 2019-11-04 → none |
| 9 | Planificación |  |  |  |  |  | baseline start 2019-05-24 → none; baseline finish 2019-06-04 → none |
| 10 | Diseño del producto |  |  |  |  |  | baseline start 2019-06-05 → none; baseline finish 2019-07-03 → none |
| 11 | Programación |  |  |  |  |  | baseline start 2019-07-04 → none; baseline finish 2019-10-15 → none |
| 12 | Integración y prueba |  |  |  |  |  | baseline start 2019-10-16 → none; baseline finish 2019-11-04 → none |
| 13 | **Gestión de tareas que tomarán los datos periódicamente** |  |  |  |  |  | baseline start 2020-03-26 → none; baseline finish 2020-09-02 → none |
| 14 | Planificación |  |  |  |  |  | baseline start 2020-03-26 → none; baseline finish 2020-04-06 → none |
| 15 | Diseño del producto |  |  |  |  |  | baseline start 2020-04-07 → none; baseline finish 2020-05-06 → none |
| 16 | Programación |  |  |  |  |  | baseline start 2020-05-08 → none; baseline finish 2020-08-14 → none |
| 17 | Integración y prueba |  |  |  |  |  | baseline start 2020-08-17 → none; baseline finish 2020-09-02 → none |
| 18 | **Dispositivos de puerta de enlace** |  |  | 133d → 133d? |  | 18d → 0d | baseline start 2019-11-05 → none; baseline finish 2020-05-15 → none |
| 20 | **Conectar la puerta de enlace con los enchufes** |  |  |  |  |  | baseline start 2019-11-05 → none; baseline finish 2019-11-19 → none |
| 21 | Planificación |  |  |  |  |  | baseline start 2019-11-05 → none; baseline finish 2019-11-05 → none |
| 22 | Diseño del producto |  |  |  |  |  | baseline start 2019-11-06 → none; baseline finish 2019-11-06 → none |
| 23 | Programación |  |  |  |  |  | baseline start 2019-11-07 → none; baseline finish 2019-11-15 → none |
| 24 | Integración y prueba |  |  |  |  |  | baseline start 2019-11-15 → none; baseline finish 2019-11-19 → none |
| 25 | **Conectar la puerta de enlace con la base de datos** |  |  |  |  |  | baseline start 2020-03-03 → none; baseline finish 2020-03-25 → none |
| 26 | Planificación |  |  |  |  |  | baseline start 2020-03-03 → none; baseline finish 2020-03-03 → none |
| 27 | Diseño del producto |  |  |  |  |  | baseline start 2020-03-04 → none; baseline finish 2020-03-05 → none |
| 28 | Programación |  |  |  |  |  | baseline start 2020-03-06 → none; baseline finish 2020-03-20 → none |
| 29 | Integración y prueba |  |  |  |  |  | baseline start 2020-03-23 → none; baseline finish 2020-03-25 → none |
| 30 | **Procesar las medidas recibidas de los sensores** |  |  |  |  |  | baseline start 2019-11-20 → none; baseline finish 2020-01-22 → none |
| 31 | Planificación |  |  |  |  |  | baseline start 2019-11-20 → none; baseline finish 2019-11-20 → none |
| 32 | Diseño del producto |  |  |  |  |  | baseline start 2019-11-21 → none; baseline finish 2019-11-27 → none |
| 33 | Progamación |  |  |  |  |  | baseline start 2019-11-28 → none; baseline finish 2020-01-06 → none |
| 34 | Integración y prueba |  |  |  |  |  | baseline start 2020-01-07 → none; baseline finish 2020-01-22 → none |
| 35 | **Enlazar la puerta enlace con la aplicación de usuario** |  |  |  |  |  | baseline start 2020-04-02 → none; baseline finish 2020-05-15 → none |
| 36 | Planificación |  |  |  |  |  | baseline start 2020-04-02 → none; baseline finish 2020-04-02 → none |
| 37 | Diseño del producto |  |  |  |  |  | baseline start 2020-04-03 → none; baseline finish 2020-04-09 → none |
| 38 | Programación |  |  |  |  |  | baseline start 2020-04-10 → none; baseline finish 2020-05-07 → none |
| 39 | Integración y prueba |  |  |  |  |  | baseline start 2020-05-08 → none; baseline finish 2020-05-15 → none |
| 40 | **Aplicación de clientes** |  |  |  | 42% → 38% |  | baseline start 2019-02-04 → none; baseline finish 2020-04-01 → none |
| 41 | **Creación de la interfaz** |  | 2019-04-22 A → 2019-04-09 A (-13d) | 54d → 47d |  |  | baseline start 2019-02-04 → none; baseline finish 2019-04-22 → none |
| 42 | Planificación |  |  |  |  |  | baseline start 2019-02-04 → none; baseline finish 2019-02-05 → none |
| 43 | Diseño del producto |  |  |  |  |  | baseline start 2019-02-06 → none; baseline finish 2019-02-14 → none |
| 44 | Programación |  | 2019-04-08 A → 2019-03-28 A (-11d) | 37d → 30d |  |  | baseline start 2019-02-15 → none; baseline finish 2019-04-08 → none |
| 45 | Integración y prueba | 2019-04-09 A → 2019-03-29 A (-11d) | 2019-04-22 A → 2019-04-09 A (-13d) |  |  |  | baseline start 2019-04-09 → none; baseline finish 2019-04-22 → none |
| 46 | **Enlazar la aplicación con la base de datos** |  |  |  |  |  | baseline start 2020-01-23 → none; baseline finish 2020-03-02 → none |
| 47 | Planificación |  |  |  |  |  | baseline start 2020-01-23 → none; baseline finish 2020-01-23 → none |
| 48 | Diseño del producto |  |  |  |  |  | baseline start 2020-01-24 → none; baseline finish 2020-01-29 → none |
| 49 | Progamación |  |  |  |  |  | baseline start 2020-01-30 → none; baseline finish 2020-02-24 → none |
| 50 | Integración y prueba |  |  |  |  |  | baseline start 2020-02-25 → none; baseline finish 2020-03-02 → none |
| 51 | **Mostrar los datos recibidos en la interfaz** |  |  |  |  |  | baseline start 2020-01-23 → none; baseline finish 2020-04-01 → none |
| 52 | Planificación |  |  |  |  |  | baseline start 2020-01-23 → none; baseline finish 2020-01-24 → none |
| 53 | Diseño del producto |  |  |  |  |  | baseline start 2020-01-27 → none; baseline finish 2020-02-03 → none |
| 54 | Programación |  |  |  |  |  | baseline start 2020-02-04 → none; baseline finish 2020-03-10 → none |
| 55 | Integración y prueba |  |  |  |  |  | baseline start 2020-03-11 → none; baseline finish 2020-04-01 → none |
| 56 | **Base de datos** |  |  |  |  |  | baseline start 2019-05-24 → none; baseline finish 2020-06-17 → none |
| 57 | **Crear la estructura de los datos** |  |  |  |  |  | baseline start 2019-05-24 → none; baseline finish 2019-08-16 → none |
| 58 | Planificación |  |  |  |  |  | baseline start 2019-05-24 → none; baseline finish 2019-05-27 → none |
| 59 | Diseño del producto |  |  |  |  |  | baseline start 2019-05-28 → none; baseline finish 2019-06-04 → none |
| 60 | Programación |  |  |  |  |  | baseline start 2019-06-05 → none; baseline finish 2019-07-10 → none |
| 61 | Integración y prueba |  |  |  |  |  | baseline start 2019-07-11 → none; baseline finish 2019-08-16 → none |
| 62 | **Recibir peticiones externas** |  |  |  |  |  | baseline start 2019-08-19 → none; baseline finish 2019-09-18 → none |
| 63 | Planificación |  |  |  |  |  | baseline start 2019-08-19 → none; baseline finish 2019-08-19 → none |
| 64 | Diseño del producto |  |  |  |  |  | baseline start 2019-08-20 → none; baseline finish 2019-08-22 → none |
| 65 | Programación |  |  |  |  |  | baseline start 2019-08-23 → none; baseline finish 2019-09-12 → none |
| 66 | Integración y prueba |  |  |  |  |  | baseline start 2019-09-13 → none; baseline finish 2019-09-18 → none |
| 67 | **Gestión de cuentas** |  |  |  |  |  | baseline start 2020-05-18 → none; baseline finish 2020-06-17 → none |
| 68 | Planificación |  |  |  |  |  | baseline start 2020-05-18 → none; baseline finish 2020-05-18 → none |
| 69 | Diseño del producto |  |  |  |  |  | baseline start 2020-05-19 → none; baseline finish 2020-05-21 → none |
| 70 | Programación |  |  |  |  |  | baseline start 2020-05-22 → none; baseline finish 2020-06-11 → none |
| 71 | Integración y prueba |  |  |  |  |  | baseline start 2020-06-12 → none; baseline finish 2020-06-17 → none |
