# GestiónProyecto_Llamathrust_Optimizado

How a schedule from MS Project changed from version to version. A marks actual dates.

## Version 1 (saved 2019-04-18, file ProjectFinal_sinSeguimiento.mpp)

Note of the change: Projects con segumiento metidos

| ID | WBS | Task | Duration | Start | Finish | Predecessors | Complete | Total float | Constraint |
| --- | --- | --- | --- | --- | --- | --- | --- | --- | --- |
| 1 | 1 | **Llamathrust** | 399d | 2019-02-04 A | 2020-09-02 |  | 16% | 0d |  |
| 2 | 1.1 | **Dispositivos Enchufe** | 399d | 2019-02-04 A | 2020-09-02 |  | 17% | 0d |  |
| 3 | 1.1.1 | **Tomar datos de los sensores** | 75d | 2019-02-04 A | 2019-05-23 |  | 70% | 18d |  |
| 4 |  | Planificación | 7d | 2019-02-04 A | 2019-02-12 A |  | 100% |  |  |
| 5 |  | Diseño del producto | 18d | 2019-02-13 A | 2019-03-08 A | 4 | 100% |  |  |
| 6 |  | Programación | 38d | 2019-03-11 A | 2019-05-08 | 5 | 71% | 6d |  |
| 7 |  | Integración y prueba | 11d | 2019-05-09 | 2019-05-23 | 6 |  | 6d |  |
| 8 | 1.1.2 | **Conectar los enchufes con la puerta de enlace** | 113d | 2019-05-24 | 2019-11-04 | 3, 41 |  | 18d |  |
| 9 |  | Planificación | 8d | 2019-05-24 | 2019-06-04 |  |  | 18d |  |
| 10 |  | Diseño del producto | 21d | 2019-06-05 | 2019-07-03 | 9 |  | 18d |  |
| 11 |  | Programación | 71d | 2019-07-04 | 2019-10-15 | 10 |  | 18d | start no earlier than 2019-07-04 |
| 12 |  | Integración y prueba | 13d | 2019-10-16 | 2019-11-04 | 11 |  | 18d |  |
| 13 | 1.1.3 | **Gestión de tareas que tomarán los datos periódicamente** | 115d | 2020-03-26 | 2020-09-02 | 25 |  | 0d |  |
| 14 |  | Planificación | 8d | 2020-03-26 | 2020-04-06 |  |  | 1d |  |
| 15 |  | Diseño del producto | 22d | 2020-04-07 | 2020-05-06 | 14 |  | 1d |  |
| 16 |  | Programación | 71d | 2020-05-08 | 2020-08-14 | 15 |  | 0d | start no earlier than 2020-05-08 |
| 17 |  | Integración y prueba | 13d | 2020-08-17 | 2020-09-02 | 16 |  | 0d |  |
| 18 | 1.2 | **Dispositivos de puerta de enlace** | 133d | 2019-11-05 | 2020-05-15 |  |  | 0d |  |
| 20 | 1.2.1 | **Conectar la puerta de enlace con los enchufes** | 11d | 2019-11-05 | 2019-11-19 | 8 |  | 18d |  |
| 21 |  | Planificación | 1d | 2019-11-05 | 2019-11-05 |  |  | 18d |  |
| 22 |  | Diseño del producto | 1d | 2019-11-06 | 2019-11-06 | 21 |  | 18d |  |
| 23 |  | Programación | 7d | 2019-11-07 | 2019-11-15 | 22 |  | 18d |  |
| 24 |  | Integración y prueba | 2d | 2019-11-15 | 2019-11-19 | 23 |  | 18d |  |
| 25 | 1.2.2 | **Conectar la puerta de enlace con la base de datos** | 16d | 2020-03-03 | 2020-03-25 | 46 |  | 1d |  |
| 26 |  | Planificación | 1d | 2020-03-03 | 2020-03-03 |  |  | 1d |  |
| 27 |  | Diseño del producto | 2d | 2020-03-04 | 2020-03-05 | 26 |  | 1d |  |
| 28 |  | Programación | 10d | 2020-03-06 | 2020-03-20 | 27 |  | 1d |  |
| 29 |  | Integración y prueba | 3d | 2020-03-23 | 2020-03-25 | 28 |  | 1d |  |
| 30 | 1.2.3 | **Procesar las medidas recibidas de los sensores** | 41d | 2019-11-20 | 2020-01-22 | 20 |  | 1d |  |
| 31 |  | Planificación | 1d | 2019-11-20 | 2019-11-20 |  |  | 18d |  |
| 32 |  | Diseño del producto | 5d | 2019-11-21 | 2019-11-27 | 31 |  | 18d |  |
| 33 |  | Progamación | 13d | 2019-11-28 | 2020-01-06 | 32 |  | 10d |  |
| 34 |  | Integración y prueba | 10d | 2020-01-07 | 2020-01-22 | 33 |  | 1d |  |
| 35 | 1.2.4 | **Enlazar la puerta enlace con la aplicación de usuario** | 32d | 2020-04-02 | 2020-05-15 | 51 |  | 45d |  |
| 36 |  | Planificación | 1d | 2020-04-02 | 2020-04-02 |  |  | 45d |  |
| 37 |  | Diseño del producto | 5d | 2020-04-03 | 2020-04-09 | 36 |  | 45d |  |
| 38 |  | Programación | 20d | 2020-04-10 | 2020-05-07 | 37 |  | 45d |  |
| 39 |  | Integración y prueba | 6d | 2020-05-08 | 2020-05-15 | 38 |  | 55d |  |
| 40 | 1.3 | **Aplicación de clientes** | 289d | 2019-02-04 A | 2020-04-01 |  | 38% | 45d |  |
| 41 | 1.3.1 | **Creación de la interfaz** | 47d | 2019-02-04 A | 2019-04-09 A |  | 100% |  |  |
| 42 |  | Planificación | 2d | 2019-02-04 A | 2019-02-05 A |  | 100% |  |  |
| 43 |  | Diseño del producto | 7d | 2019-02-06 A | 2019-02-14 A | 42 | 100% |  |  |
| 44 |  | Programación | 30d | 2019-02-15 A | 2019-03-28 A | 43 | 100% |  |  |
| 45 |  | Integración y prueba | 8d | 2019-03-29 A | 2019-04-09 A | 44 | 100% |  |  |
| 46 | 1.3.2 | **Enlazar la aplicación con la base de datos** | 28d | 2020-01-23 | 2020-03-02 | 62, 30 |  | 1d |  |
| 47 |  | Planificación | 1d | 2020-01-23 | 2020-01-23 |  |  | 1d |  |
| 48 |  | Diseño del producto | 4d | 2020-01-24 | 2020-01-29 | 47 |  | 1d |  |
| 49 |  | Progamación | 18d | 2020-01-30 | 2020-02-24 | 48 |  | 1d |  |
| 50 |  | Integración y prueba | 5d | 2020-02-25 | 2020-03-02 | 49 |  | 1d |  |
| 51 | 1.3.3 | **Mostrar los datos recibidos en la interfaz** | 49d | 2020-01-23 | 2020-04-01 | 62, 30 |  | 45d |  |
| 52 |  | Planificación | 2d | 2020-01-23 | 2020-01-24 |  |  | 53d |  |
| 53 |  | Diseño del producto | 6d | 2020-01-27 | 2020-02-03 | 52 |  | 53d |  |
| 54 |  | Programación | 26d | 2020-02-04 | 2020-03-10 | 53 |  | 53d |  |
| 55 |  | Integración y prueba | 14d | 2020-03-11 | 2020-04-01 | 54 |  | 45d |  |
| 56 | 1.4 | **Base de datos** | 269d | 2019-05-24 | 2020-06-17 |  |  | 55d |  |
| 57 | 1.4.1 | **Crear la estructura de los datos** | 59d | 2019-05-24 | 2019-08-16 | 3, 41 |  | 74d |  |
| 58 |  | Planificación | 2d | 2019-05-24 | 2019-05-27 |  |  | 92d |  |
| 59 |  | Diseño del producto | 6d | 2019-05-28 | 2019-06-04 | 58 |  | 92d |  |
| 60 |  | Programación | 26d | 2019-06-05 | 2019-07-10 | 59 |  | 92d |  |
| 61 |  | Integración y prueba | 12d | 2019-07-11 | 2019-08-16 | 60 |  | 74d |  |
| 62 | 1.4.2 | **Recibir peticiones externas** | 23d | 2019-08-19 | 2019-09-18 | 57 |  | 74d |  |
| 63 |  | Planificación | 1d | 2019-08-19 | 2019-08-19 |  |  | 74d |  |
| 64 |  | Diseño del producto | 3d | 2019-08-20 | 2019-08-22 | 63 |  | 74d |  |
| 65 |  | Programación | 15d | 2019-08-23 | 2019-09-12 | 64 |  | 74d |  |
| 66 |  | Integración y prueba | 4d | 2019-09-13 | 2019-09-18 | 65 |  | 84d |  |
| 67 | 1.4.3 | **Gestión de cuentas** | 23d | 2020-05-18 | 2020-06-17 | 35 |  | 55d |  |
| 68 |  | Planificación | 1d | 2020-05-18 | 2020-05-18 |  |  | 55d |  |
| 69 |  | Diseño del producto | 3d | 2020-05-19 | 2020-05-21 | 68 |  | 55d |  |
| 70 |  | Programación | 15d | 2020-05-22 | 2020-06-11 | 69 |  | 55d |  |
| 71 |  | Integración y prueba | 4d | 2020-06-12 | 2020-06-17 | 70 |  | 55d |  |

## Version 2 (data date 2019-05-11, saved 2019-04-24, file Project_conSEGUIMIENTO_FINAL_conReuniones.mpp)

Note of the change: Merge branch 'master' of https://github.com/JuanCasado/GESTION_PROYECTOS

Last finish stays 2020-09-02. Complete tasks 6 → 13.

Added:

| ID | Task | Duration | Start | Finish | Constraint | Resources |
| --- | --- | --- | --- | --- | --- | --- |
| 71 | **Reunión** | 396d | 2019-02-05 A | 2020-09-01 |  |  |
| 72 | Reunión 1 | 0h | 2019-02-05 A | 2019-02-05 A | start no earlier than 2019-02-05 | Analista; Programador; Scrum Master; Técnico |
| 73 | Reunión 2 | 0h | 2019-02-19 A | 2019-02-19 A | start no earlier than 2019-02-19 | Analista; Programador; Scrum Master; Técnico |
| 74 | Reunión 3 | 0h | 2019-03-05 A | 2019-03-05 A | start no earlier than 2019-03-05 | Analista; Scrum Master; Técnico |
| 75 | Reunión 4 | 0h | 2019-03-19 A | 2019-03-19 A | start no earlier than 2019-03-19 | Analista; Programador; Scrum Master; Técnico |
| 76 | Reunión 5 | 0h | 2019-04-02 A | 2019-04-02 A | start no earlier than 2019-04-02 | Analista; Programador; Scrum Master; Técnico |
| 77 | Reunión 6 | 0h | 2019-04-16 A | 2019-04-16 A | start no earlier than 2019-04-16 | Analista; Programador; Scrum Master; Técnico |
| 78 | Reunión 7 | 0h | 2019-04-30 A | 2019-04-30 A | start no earlier than 2019-04-30 | Analista; Programador; Scrum Master; Técnico |
| 79 | Reunión 8 | 0h | 2019-05-14 | 2019-05-14 | start no earlier than 2019-05-14 | Analista; Programador; Scrum Master; Técnico |
| 80 | Reunión 9 | 0h | 2019-05-28 | 2019-05-28 | start no earlier than 2019-05-28 | Analista; Programador; Scrum Master; Técnico |
| 81 | Reunión 10 | 0h | 2019-06-11 | 2019-06-11 | start no earlier than 2019-06-11 | Analista; Programador; Scrum Master |
| 82 | Reunión 11 | 0h | 2019-06-25 | 2019-06-25 | start no earlier than 2019-06-25 | Analista; Programador; Scrum Master |
| 83 | Reunión 12 | 0h | 2019-07-09 | 2019-07-09 | start no earlier than 2019-07-09 | Analista; Programador; Scrum Master; Técnico |
| 84 | Reunión 13 | 0h | 2019-07-23 | 2019-07-23 | start no earlier than 2019-07-23 | Analista; Programador; Scrum Master; Técnico |
| 85 | Reunión 14 | 0h | 2019-08-06 | 2019-08-06 | start no earlier than 2019-08-06 | Analista; Scrum Master; Técnico |
| 86 | Reunión 15 | 0h | 2019-08-20 | 2019-08-20 | start no earlier than 2019-08-20 | Analista; Programador; Scrum Master; Técnico |
| 87 | Reunión 16 | 0h | 2019-09-03 | 2019-09-03 | start no earlier than 2019-09-03 | Analista; Programador; Scrum Master; Técnico |
| 88 | Reunión 17 | 0h | 2019-09-17 | 2019-09-17 | start no earlier than 2019-09-17 | Analista; Programador; Scrum Master; Técnico |
| 89 | Reunión 18 | 0h | 2019-10-01 | 2019-10-01 | start no earlier than 2019-10-01 | Analista; Programador; Scrum Master; Técnico |
| 90 | Reunión 19 | 0h | 2019-10-15 | 2019-10-15 | start no earlier than 2019-10-15 | Analista; Programador; Scrum Master; Técnico |
| 91 | Reunión 20 | 0h | 2019-10-29 | 2019-10-29 | start no earlier than 2019-10-29 | Analista; Programador; Scrum Master; Técnico |
| 92 | Reunión 21 | 0h | 2019-11-12 | 2019-11-12 | start no earlier than 2019-11-12 | Analista; Programador; Scrum Master; Técnico |
| 93 | Reunión 22 | 0h | 2019-11-26 | 2019-11-26 | start no earlier than 2019-11-26 | Analista; Programador; Scrum Master; Técnico |
| 94 | Reunión 23 | 0h | 2019-12-10 | 2019-12-10 | start no earlier than 2019-12-10 | Analista; Programador; Scrum Master; Técnico |
| 95 | Reunión 24 | 0h | 2019-12-24 | 2019-12-24 | start no earlier than 2019-12-24 | Analista; Scrum Master |
| 96 | Reunión 25 | 0h | 2020-01-07 | 2020-01-07 | start no earlier than 2020-01-07 | Programador; Técnico |
| 97 | Reunión 26 | 0h | 2020-01-21 | 2020-01-21 | start no earlier than 2020-01-21 | Analista; Programador; Scrum Master; Técnico |
| 98 | Reunión 27 | 0h | 2020-02-04 | 2020-02-04 | start no earlier than 2020-02-04 | Analista; Programador; Scrum Master; Técnico |
| 99 | Reunión 28 | 0h | 2020-02-18 | 2020-02-18 | start no earlier than 2020-02-18 | Analista; Programador; Scrum Master; Técnico |
| 100 | Reunión 29 | 0h | 2020-03-03 | 2020-03-03 | start no earlier than 2020-03-03 | Analista; Programador; Scrum Master; Técnico |
| 101 | Reunión 30 | 0h | 2020-03-17 | 2020-03-17 | start no earlier than 2020-03-17 | Analista; Programador; Técnico |
| 102 | Reunión 31 | 0h | 2020-03-31 | 2020-03-31 | start no earlier than 2020-03-31 | Analista; Programador; Scrum Master; Técnico |
| 103 | Reunión 32 | 0h | 2020-04-14 | 2020-04-14 | start no earlier than 2020-04-14 | Analista; Programador; Scrum Master; Técnico |
| 104 | Reunión 33 | 0h | 2020-04-28 | 2020-04-28 | start no earlier than 2020-04-28 | Analista; Programador; Scrum Master; Técnico |
| 105 | Reunión 34 | 0h | 2020-05-12 | 2020-05-12 | start no earlier than 2020-05-12 | Analista; Programador; Scrum Master; Técnico |
| 106 | Reunión 35 | 0h | 2020-05-26 | 2020-05-26 | start no earlier than 2020-05-26 | Analista; Programador; Scrum Master; Técnico |
| 107 | Reunión 36 | 0h | 2020-06-09 | 2020-06-09 | start no earlier than 2020-06-09 | Analista; Programador; Scrum Master; Técnico |
| 108 | Reunión 37 | 0h | 2020-06-23 | 2020-06-23 | start no earlier than 2020-06-23 | Analista; Programador; Técnico |
| 109 | Reunión 38 | 0h | 2020-07-07 | 2020-07-07 | start no earlier than 2020-07-07 | Analista; Programador; Scrum Master; Técnico |
| 110 | Reunión 39 | 0h | 2020-07-21 | 2020-07-21 | start no earlier than 2020-07-21 | Analista; Programador; Scrum Master; Técnico |
| 111 | Reunión 40 | 0h | 2020-08-04 | 2020-08-04 | start no earlier than 2020-08-04 | Analista; Programador; Scrum Master; Técnico |
| 112 | Reunión 41 | 0h | 2020-08-18 | 2020-08-18 | start no earlier than 2020-08-18 | Analista; Programador; Scrum Master; Técnico |
| 113 | Reunión 42 | 0h | 2020-09-01 | 2020-09-01 | start no earlier than 2020-09-01 | Analista; Programador; Scrum Master; Técnico |

Changed:

| ID | Task | Start | Finish | Duration | Complete | Total float | Other |
| --- | --- | --- | --- | --- | --- | --- | --- |
| 1 | **Llamathrust** |  |  |  | 16% → 18% |  | baseline start none → 2019-02-04; baseline finish none → 2020-09-02 |
| 2 | **Dispositivos Enchufe** |  |  |  | 17% → 20% |  | baseline start none → 2019-02-04; baseline finish none → 2020-09-02 |
| 3 | **Tomar datos de los sensores** |  |  |  | 70% → 80% |  | baseline start none → 2019-02-04; baseline finish none → 2019-05-23 |
| 4 | Planificación |  |  |  |  |  | baseline start none → 2019-02-04; baseline finish none → 2019-02-12 |
| 5 | Diseño del producto |  |  |  |  |  | baseline start none → 2019-02-13; baseline finish none → 2019-03-08 |
| 6 | Programación |  |  |  | 71% → 90% |  | baseline start none → 2019-03-11; baseline finish none → 2019-05-08 |
| 7 | Integración y prueba |  |  |  |  |  | baseline start none → 2019-05-09; baseline finish none → 2019-05-23 |
| 8 | **Conectar los enchufes con la puerta de enlace** |  |  |  |  |  | baseline start none → 2019-05-24; baseline finish none → 2019-11-04 |
| 9 | Planificación |  |  |  |  |  | baseline start none → 2019-05-24; baseline finish none → 2019-06-04 |
| 10 | Diseño del producto |  |  |  |  |  | baseline start none → 2019-06-05; baseline finish none → 2019-07-03 |
| 11 | Programación |  |  |  |  |  | baseline start none → 2019-07-04; baseline finish none → 2019-10-15 |
| 12 | Integración y prueba |  |  |  |  |  | baseline start none → 2019-10-16; baseline finish none → 2019-11-04 |
| 13 | **Gestión de tareas que tomarán los datos periódicamente** |  |  |  |  |  | baseline start none → 2020-03-26; baseline finish none → 2020-09-02 |
| 14 | Planificación |  |  |  |  |  | baseline start none → 2020-03-26; baseline finish none → 2020-04-06 |
| 15 | Diseño del producto |  |  |  |  |  | baseline start none → 2020-04-07; baseline finish none → 2020-05-06 |
| 16 | Programación |  |  |  |  |  | baseline start none → 2020-05-08; baseline finish none → 2020-08-14 |
| 17 | Integración y prueba |  |  |  |  |  | baseline start none → 2020-08-17; baseline finish none → 2020-09-02 |
| 18 | **Dispositivos de puerta de enlace** |  |  |  |  | 0d → 18d | baseline start none → 2019-11-05; baseline finish none → 2020-05-15 |
| 19 | **Conectar la puerta de enlace con los enchufes** |  |  |  |  |  | baseline start none → 2019-11-05; baseline finish none → 2019-11-19 |
| 20 | Planificación |  |  |  |  |  | baseline start none → 2019-11-05; baseline finish none → 2019-11-05 |
| 21 | Diseño del producto |  |  |  |  |  | baseline start none → 2019-11-06; baseline finish none → 2019-11-06 |
| 22 | Programación |  |  |  |  |  | baseline start none → 2019-11-07; baseline finish none → 2019-11-15 |
| 23 | Integración y prueba |  |  |  |  |  | baseline start none → 2019-11-15; baseline finish none → 2019-11-19 |
| 24 | **Conectar la puerta de enlace con la base de datos** |  |  |  |  |  | baseline start none → 2020-03-03; baseline finish none → 2020-03-25 |
| 25 | Planificación |  |  |  |  |  | baseline start none → 2020-03-03; baseline finish none → 2020-03-03 |
| 26 | Diseño del producto |  |  |  |  |  | baseline start none → 2020-03-04; baseline finish none → 2020-03-05 |
| 27 | Programación |  |  |  |  |  | baseline start none → 2020-03-06; baseline finish none → 2020-03-20 |
| 28 | Integración y prueba |  |  |  |  |  | baseline start none → 2020-03-23; baseline finish none → 2020-03-25 |
| 29 | **Procesar las medidas recibidas de los sensores** |  |  |  |  |  | baseline start none → 2019-11-20; baseline finish none → 2020-01-22 |
| 30 | Planificación |  |  |  |  |  | baseline start none → 2019-11-20; baseline finish none → 2019-11-20 |
| 31 | Diseño del producto |  |  |  |  |  | baseline start none → 2019-11-21; baseline finish none → 2019-11-27 |
| 32 | Progamación |  |  |  |  |  | baseline start none → 2019-11-28; baseline finish none → 2020-01-06 |
| 33 | Integración y prueba |  |  |  |  |  | baseline start none → 2020-01-07; baseline finish none → 2020-01-22 |
| 34 | **Enlazar la puerta enlace con la aplicación de usuario** |  |  |  |  |  | baseline start none → 2020-04-02; baseline finish none → 2020-05-15 |
| 35 | Planificación |  |  |  |  |  | baseline start none → 2020-04-02; baseline finish none → 2020-04-02 |
| 36 | Diseño del producto |  |  |  |  |  | baseline start none → 2020-04-03; baseline finish none → 2020-04-09 |
| 37 | Programación |  |  |  |  |  | baseline start none → 2020-04-10; baseline finish none → 2020-05-07 |
| 38 | Integración y prueba |  |  |  |  |  | baseline start none → 2020-05-08; baseline finish none → 2020-05-15 |
| 39 | **Aplicación de clientes** |  |  |  | 38% → 41% |  | baseline start none → 2019-02-04; baseline finish none → 2020-04-01 |
| 40 | **Creación de la interfaz** |  | 2019-04-09 A → 2019-04-17 A (+8d) | 47d → 52.52d |  |  | baseline start none → 2019-02-04; baseline finish none → 2019-04-22 |
| 41 | Planificación |  |  |  |  |  | baseline start none → 2019-02-04; baseline finish none → 2019-02-05 |
| 42 | Diseño del producto |  |  |  |  |  | baseline start none → 2019-02-06; baseline finish none → 2019-02-14 |
| 43 | Programación |  | 2019-03-28 A → 2019-04-10 A (+13d) | 30d → 38.12d |  |  | baseline start none → 2019-02-15; baseline finish none → 2019-04-08 |
| 44 | Integración y prueba | 2019-03-29 A → 2019-04-09 A (+11d) | 2019-04-09 A → 2019-04-17 A (+8d) | 8d → 6.53d |  |  | baseline start none → 2019-04-09; baseline finish none → 2019-04-22 |
| 45 | **Enlazar la aplicación con la base de datos** |  |  |  |  |  | baseline start none → 2020-01-23; baseline finish none → 2020-03-02 |
| 46 | Planificación |  |  |  |  |  | baseline start none → 2020-01-23; baseline finish none → 2020-01-23 |
| 47 | Diseño del producto |  |  |  |  |  | baseline start none → 2020-01-24; baseline finish none → 2020-01-29 |
| 48 | Progamación |  |  |  |  |  | baseline start none → 2020-01-30; baseline finish none → 2020-02-24 |
| 49 | Integración y prueba |  |  |  |  |  | baseline start none → 2020-02-25; baseline finish none → 2020-03-02 |
| 50 | **Mostrar los datos recibidos en la interfaz** |  |  |  |  |  | baseline start none → 2020-01-23; baseline finish none → 2020-04-01 |
| 51 | Planificación |  |  |  |  |  | baseline start none → 2020-01-23; baseline finish none → 2020-01-24 |
| 52 | Diseño del producto |  |  |  |  |  | baseline start none → 2020-01-27; baseline finish none → 2020-02-03 |
| 53 | Programación |  |  |  |  |  | baseline start none → 2020-02-04; baseline finish none → 2020-03-10 |
| 54 | Integración y prueba |  |  |  |  |  | baseline start none → 2020-03-11; baseline finish none → 2020-04-01 |
| 55 | **Base de datos** |  |  |  |  |  | baseline start none → 2019-05-24; baseline finish none → 2020-06-17 |
| 56 | **Crear la estructura de los datos** |  |  |  |  |  | baseline start none → 2019-05-24; baseline finish none → 2019-08-16 |
| 57 | Planificación |  |  |  |  |  | baseline start none → 2019-05-24; baseline finish none → 2019-05-27 |
| 58 | Diseño del producto |  |  |  |  |  | baseline start none → 2019-05-28; baseline finish none → 2019-06-04 |
| 59 | Programación |  |  |  |  |  | baseline start none → 2019-06-05; baseline finish none → 2019-07-10 |
| 60 | Integración y prueba |  |  |  |  |  | baseline start none → 2019-07-11; baseline finish none → 2019-08-16 |
| 61 | **Recibir peticiones externas** |  |  |  |  |  | baseline start none → 2019-08-19; baseline finish none → 2019-09-18 |
| 62 | Planificación |  |  |  |  |  | baseline start none → 2019-08-19; baseline finish none → 2019-08-19 |
| 63 | Diseño del producto |  |  |  |  |  | baseline start none → 2019-08-20; baseline finish none → 2019-08-22 |
| 64 | Programación |  |  |  |  |  | baseline start none → 2019-08-23; baseline finish none → 2019-09-12 |
| 65 | Integración y prueba |  |  |  |  |  | baseline start none → 2019-09-13; baseline finish none → 2019-09-18 |
| 66 | **Gestión de cuentas** |  |  |  |  |  | baseline start none → 2020-05-18; baseline finish none → 2020-06-17 |
| 67 | Planificación |  |  |  |  |  | baseline start none → 2020-05-18; baseline finish none → 2020-05-18 |
| 68 | Diseño del producto |  |  |  |  |  | baseline start none → 2020-05-19; baseline finish none → 2020-05-21 |
| 69 | Programación |  |  |  |  |  | baseline start none → 2020-05-22; baseline finish none → 2020-06-11 |
| 70 | Integración y prueba |  |  |  |  |  | baseline start none → 2020-06-12; baseline finish none → 2020-06-17 |

## Version 3 (data date 2019-05-11, saved 2019-04-24, file ProjectFinal_SEGUIMIENTO_sinReuniones.mpp)

Note of the change: Projects con segumiento metidos

Last finish stays 2020-09-02. Complete tasks 13 → 6.

Removed: 71 Reunión; 72 Reunión 1; 73 Reunión 2; 74 Reunión 3; 75 Reunión 4; 76 Reunión 5; 77 Reunión 6; 78 Reunión 7; 79 Reunión 8; 80 Reunión 9; 81 Reunión 10; 82 Reunión 11; 83 Reunión 12; 84 Reunión 13; 85 Reunión 14; 86 Reunión 15; 87 Reunión 16; 88 Reunión 17; 89 Reunión 18; 90 Reunión 19; 91 Reunión 20; 92 Reunión 21; 93 Reunión 22; 94 Reunión 23; 95 Reunión 24; 96 Reunión 25; 97 Reunión 26; 98 Reunión 27; 99 Reunión 28; 100 Reunión 29; 101 Reunión 30; 102 Reunión 31; 103 Reunión 32; 104 Reunión 33; 105 Reunión 34; 106 Reunión 35; 107 Reunión 36; 108 Reunión 37; 109 Reunión 38; 110 Reunión 39; 111 Reunión 40; 112 Reunión 41; 113 Reunión 42
